# plans

Schedule from MS Project, 2009-03-17 to 2009-06-30.
Systop

## Calendars

- 标准: Mon-Fri 08:00-12:00, 13:00-17:00; Sat-Sun off.

## Resources

| Resource |
| --- |
| 李振山 |
| 郭洪亮 |
| 王斌斌 |
| 杜忠涛 |
| 杨河 |
| 美工 |

## Schedule

| ID | Task | Type | Duration | Start | Finish | Predecessors | Total slack | Free slack | Constraint | Resources | Work |
| --- | --- | --- | --- | --- | --- | --- | --- | --- | --- | --- | --- |
| 1 | 架构设计 |  | 10d | 2009-03-17 | 2009-03-30 |  | 21d | 0d | start no earlier than 2009-03-17 | 李振山 | 80h |
| 2 | 数据源管理 |  | 3d | 2009-03-26 | 2009-03-30 |  | 66d |  | start no earlier than 2009-03-26 | 王斌斌; 李振山 [50%] | 36h |
| 3 | CMS改造 |  | 5d | 2009-03-23 | 2009-03-27 |  | 22d | 1d | start no earlier than 2009-03-23 | 郭洪亮 | 40h |
| 4 | 用户注册 |  | 5d | 2009-03-23 | 2009-03-27 |  | 67d |  | start no earlier than 2009-03-23 | 杜忠涛 | 40h |
| 5 | 权限系统改造 |  | 5d | 2009-03-23 | 2009-03-27 |  | 22d | 1d | start no earlier than 2009-03-23 | 王斌斌 | 40h |
| 6 | V0.1 | milestone | 0d | 2009-03-30 | 2009-03-30 | 5, 1, 3, 2 | 21d | 0d |  |  |  |
| 7 | 测震数据服务 |  | 20d | 2009-03-31 | 2009-04-27 | 6 | 31d | 0d |  | 王斌斌; 杨河 | 320h |
| 8 | V0.2 | milestone | 0d | 2009-04-27 | 2009-04-27 | 7 | 31d | 10d |  |  |  |
| 9 | 前兆数据服务 |  | 30d? | 2009-03-31 | 2009-05-11 | 6 | 21d | 0d |  | 郭洪亮; 杜忠涛 | 480h |
| 10 | V0.3 | milestone | 0d | 2009-05-11 | 2009-05-11 | 9 | 21d | 0d |  |  |  |
| 11 | 在线数据订阅 |  | 15d | 2009-05-12 | 2009-06-01 | 8, 10 | 21d | 0d |  | 郭洪亮; 王斌斌 | 240h |
| 12 | V0.4 | milestone | 0d | 2009-06-01 | 2009-06-01 | 11 | 21d |  |  |  |  |
| 13 | 元数据服务 |  | 5d | 2009-04-28 | 2009-05-04 |  | 41d | 0d | start no earlier than 2009-04-28 | 杨河 | 40h |
| 14 | V0.5 | milestone | 0d | 2009-05-04 | 2009-05-04 | 13 | 41d | 24d |  |  |  |
| 15 | 网站设计 |  | 15d | 2009-04-28 | 2009-05-18 | 3 | 17d | 0d | start no earlier than 2009-04-28 | 杨河; 杜忠涛; 美工 | 360h |
| 16 | V0.6 | milestone | 0d | 2009-05-18 | 2009-05-18 | 15 | 17d | 0d |  |  |  |
| 17 | 数据服务统计 |  | 3d | 2009-05-19 | 2009-05-21 | 16 | 17d | 0d |  | 杜忠涛 | 24h |
| 18 | 离线数据服务 |  | 3d | 2009-05-22 | 2009-05-26 | 17 | 17d | 0d |  | 杜忠涛 | 24h |
| 19 | 用户反馈，找回密码等功能 |  | 8d | 2009-05-27 | 2009-06-05 | 18 | 17d | 0d |  | 杜忠涛 | 64h |
| 20 | 1.0-alpha | milestone | 0d | 2009-06-05 | 2009-06-05 | 19, 16, 14, 8, 10 | 17d | 4d |  |  |  |
| 21 | 1.0-beta | milestone | 0d | 2009-06-12 | 2009-06-12 | 20 | 13d | 5d | start no earlier than 2009-06-12 |  |  |
| 22 | 1.0-RC | milestone | 0d | 2009-06-19 | 2009-06-19 | 21 | 8d | 7d | start no earlier than 2009-06-19 |  |  |
| 23 | 1.0GA | milestone | 0d | 2009-06-30 | 2009-06-30 | 22 | 1d |  | start no earlier than 2009-06-30 |  |  |
| 24 | 项目管理 |  | 75d | 2009-03-18 | 2009-06-30 |  | 0d |  | start no earlier than 2009-03-18 | 李振山 [75%] | 450h |
| 25 | 测试 |  | 75d | 2009-03-18 | 2009-06-30 |  | 0d |  |  | 李振山 [15%] | 90h |
| 26 | 配置管理 |  | 75d | 2009-03-18 | 2009-06-30 |  | 0d |  |  | 李振山 [10%] | 60h |
