# systopbase

Schedule from MS Project, 2009-02-11 to 2009-05-04.

## Calendars

- 标准: Mon-Fri 08:00-12:00, 13:00-17:00; Sat-Sun off. Exceptions (off unless hours are given): 2009-02-14 08:00-12:00, 13:00-17:00.

## Resources

| Resource |
| --- |
| 李振山 |
| 王斌斌 |
| 杜忠涛 |
| 老师A |
| 老师B |
| 老师C |
| 学生A |
| 学生B |
| 学生C |
| 支持人员 |

## Schedule

| ID | Task | Type | Duration | Start | Finish | Predecessors | Total slack | Free slack | Constraint | Deadline | Resources | Work |
| --- | --- | --- | --- | --- | --- | --- | --- | --- | --- | --- | --- | --- |
| 1 | 项目开始(资源到位) | milestone | 1d? | 2009-02-11 | 2009-02-11 |  | 0d |  |  | 2009-02-11 |  |  |
| 2 | 基础架构调整 |  | 8d | 2009-02-12 | 2009-02-20 | 1 | 0d |  | start no earlier than 2009-02-11 |  | 李振山 | 64h |
| 3 | 培训 |  | 1d | 2009-02-23 | 2009-02-23 | 2 | 0d |  |  |  | 李振山 | 8h |
| 4 | 完善权限管理 |  | 20d | 2009-02-24 | 2009-03-23 | 3 | 4d | 0d |  |  | 王斌斌; 李振山 [50%] | 240h |
| 5 | 嵌入工作流程 |  | 22d | 2009-02-24 | 2009-03-25 | 3 | 0d |  |  |  | 杜忠涛; 李振山 [50%] | 264h |
| 6 | Web QQ |  | 26d | 2009-03-24 | 2009-04-28 | 4 | 4d |  |  |  | 王斌斌; 李振山 [50%] | 312h |
| 7 | 日程安排 |  | 23d | 2009-03-26 | 2009-04-27 | 5 | 0d |  |  |  | 杜忠涛 | 184h |
| 8 | 新闻公告 |  | 18d | 2009-02-24 | 2009-03-19 | 3 | 12d | 0d |  |  | 老师A | 144h |
| 9 | 工作日志 |  | 20d | 2009-03-20 | 2009-04-16 | 8 | 12d |  |  |  | 老师A | 160h |
| 10 | 通讯簿 |  | 17d | 2009-02-24 | 2009-03-18 | 3 | 11d | 0d |  |  | 老师B | 136h |
| 11 | 内部电子邮件 |  | 22d? | 2009-03-19 | 2009-04-17 | 10 | 11d |  |  |  | 老师B | 176h |
| 12 | 人力资源管理 |  | 23d? | 2009-02-24 | 2009-03-26 | 3 | 44d |  |  |  | 老师C | 184h |
| 13 | 工作计划 |  | 22d | 2009-03-27 | 2009-04-27 | 12 | 5d |  |  |  | 老师C | 176h |
| 14 | 功能测试 |  | 47d | 2009-02-24 | 2009-04-29 | 3 | 3d |  |  |  | 学生A; 学生B; 学生C | 1128h |
| 15 | 文档编制 |  | 5d | 2009-04-28 | 2009-05-04 | 7 | 0d |  |  |  | 杜忠涛; 李振山 [50%] | 60h |
| 16 | 技术管理 |  | 48d | 2009-02-24 | 2009-04-30 | 3 | 2d |  |  |  | 李振山 [50%] | 192h |
| 17 | 项目支持 |  | 59d? | 2009-02-11 | 2009-05-01 |  | 1d |  | start no earlier than 2009-02-11 |  | 支持人员 [10%] | 47.2h |
